# 机端部署App开发计划

Schedule from a web Gantt chart, 2024-04-29 to 2024-04-29.
Saturdays and Sundays are off

## Schedule

| ID | WBS | Task | Duration | Start | Finish |
| --- | --- | --- | --- | --- | --- |
| 2 | 1 | **需求确认** | 1d | 2024-04-29 | 2024-04-29 |
| 3 | 1.1 | 需求定义 | 1d | 2024-04-29 | 2024-04-29 |
| 4 | 1.2 | 需求评审发布 | 1d | 2024-04-29 | 2024-04-29 |
| 5 | 1.3 | 成熟度定义 | 1d | 2024-04-29 | 2024-04-29 |
